# restaurent

How a schedule from MS Project changed from version to version. A marks actual dates.

## Version 1 (data date 2022-11-28, saved 2022-12-02, file Lab5.mpp)

Note of the change: init project

| ID | WBS | Task | Duration | Start | Finish | Predecessors | Complete | Total float | Constraint |
| --- | --- | --- | --- | --- | --- | --- | --- | --- | --- |
| 1 | 1 | **Phát triển phần mềm quản lý nhà hàng** | 47.25d | 2022-09-30 A | 2022-12-06 |  | 93% | 0d |  |
| 2 | 1.1 | **Khảo sát** | 8.38d | 2022-09-30 A | 2022-10-12 A |  | 100% |  |  |
| 3 |  | Phân tích một số hệ thống hiện hành | 1d | 2022-09-30 A | 2022-09-30 A |  | 100% |  |  |
| 4 | 1.1.2 | **Phân tích yêu cầu** | 5d | 2022-09-30 A | 2022-10-06 A |  | 100% |  |  |
| 5 |  | Phân tích yêu cầu chủ sở hữu | 1d | 2022-10-03 A | 2022-10-03 A |  | 100% |  | start no earlier than 2022-10-03 |
| 6 |  | Phân tích yêu cầu của quản lý | 1d | 2022-09-30 A | 2022-09-30 A |  | 100% |  | start no earlier than 2022-09-30 |
| 7 |  | Phân tích yêu cầu của nhân viên | 1d | 2022-09-30 A | 2022-09-30 A |  | 100% |  |  |
| 8 |  | Phân tích yêu cầu của khách hàng | 2d | 2022-10-03 A | 2022-10-04 A |  | 100% |  | start no earlier than 2022-10-03 |
| 9 |  | Phân tích yêu cầu về giao diện hệ thống | 2d | 2022-10-05 A | 2022-10-06 A | 5, 6, 7, 8 | 100% |  |  |
| 10 |  | Phân tích yêu cầu về hệ thống | 2d | 2022-10-05 A | 2022-10-06 A | 5, 6, 7, 8 | 100% |  |  |
| 11 |  | Phân tích chức năng hệ thống | 1d | 2022-10-07 A | 2022-10-07 A | 9, 10 | 100% |  |  |
| 12 |  | Lên kế hoạch | 2d | 2022-10-08 A | 2022-10-12 A | 11 | 100% |  |  |
| 13 |  | Xác định nhóm phát triển phần mềm, phân chia công việc | 1d | 2022-10-10 A | 2022-10-10 A | 11 | 100% |  | start no earlier than 2022-10-10 |
| 14 | 1.2 | **Thiết kế hệ thống** | 11d | 2022-10-12 A | 2022-10-27 A |  | 100% |  |  |
| 15 |  | Thiết kế kiến trúc hệ thống | 5d | 2022-10-13 A | 2022-10-27 A | 12, 13 | 100% |  | start no earlier than 2022-10-11 |
| 16 |  | Thiết kế các module chức năng của hệ thống | 5d | 2022-10-17 A | 2022-10-24 A | 12, 13 | 100% |  | start no earlier than 2022-10-17 |
| 17 |  | Thiết kế giao diện | 5d | 2022-10-12 A | 2022-10-20 A | 12, 13 | 100% |  |  |
| 18 |  | Thiết kế server | 5d | 2022-10-12 A | 2022-10-19 A | 12, 13 | 100% |  |  |
| 19 | 1.3 | **Phát triển hệ thống** | 19.88d | 2022-10-19 A | 2022-11-16 A |  | 100% |  |  |
| 20 |  | Phát triển các chức năng của hệ thống | 1.8w | 2022-10-25 A | 2022-11-04 A | 16 | 100% |  | start no earlier than 2022-10-23 |
| 21 |  | Phát triển giao diện | 1w | 2022-10-20 A | 2022-10-28 A | 17 | 100% |  |  |
| 22 |  | Phát triển server | 1w | 2022-10-19 A | 2022-10-26 A | 18 | 100% |  |  |
| 23 |  | Tích hợp | 1.82w | 2022-11-04 A | 2022-11-16 A | 20, 21, 22 | 100% |  |  |
| 24 | 1.4 | **Kiểm thử** | 8.38d | 2022-11-16 A | 2022-11-29 |  | 97% | 0d |  |
| 25 |  | Kiểm thử hệ thống | 5d | 2022-11-16 A | 2022-11-24 A | 23 | 100% |  |  |
| 26 |  | Kiểm thử chấp nhận người dùng | 3d | 2022-11-24 A | 2022-11-29 | 25 | 92% | 0d |  |
| 27 |  | Bảo trì | 1w | 2022-11-29 | 2022-12-06 | 26 |  | 0d |  |

## Version 2 (data date 2022-12-09, saved 2022-12-03, file Báo cáo kết thúc dự án.mpt)

Note of the change: init project

Last finish stays 2022-12-06. Complete tasks 19 → 21.

Changed:

| ID | Task | Start | Finish | Complete | Total float |
| --- | --- | --- | --- | --- | --- |
| 1 | **Phát triển phần mềm quản lý nhà hàng** |  | 2022-12-06 A | 93% → 100% | 0d → none |
| 24 | **Kiểm thử** |  | 2022-11-29 A | 97% → 100% | 0d → none |
| 26 | Kiểm thử chấp nhận người dùng |  | 2022-11-29 A | 92% → 100% | 0d → none |
| 27 | Bảo trì | 2022-11-29 A | 2022-12-06 A | 0% → 100% | 0d → none |
